# Digital Dash Project Schedule

Schedule from MS Project, 2014-11-21 to 2015-06-05, A marks actual dates.

## Calendars

- Standard: Mon-Fri 08:00-12:00, 13:00-17:00; Sat-Sun off. Exceptions (off unless hours are given): 2015-01-01 to 2015-06-30 08:00-12:00, 13:00-17:00.

## Resources

| Resource |
| --- |
| Jaime |
| Sean |
| Noah |
| Chad |
| Rishal |
| Digital Dash Team |

## Schedule

| ID | WBS | Task | Type | Duration | Start | Finish | Predecessors | Complete | Remaining | Total slack | Constraint | Resources | Work | Actual work |
| --- | --- | --- | --- | --- | --- | --- | --- | --- | --- | --- | --- | --- | --- | --- |
| 1 | 1 | Project Introduction |  | 1.5d | 2014-11-21 A | 2014-11-24 A |  | 100% |  |  |  | Digital Dash Team | 12h | 12h |
| 2 | 2 | Create Project Wiki |  | 1d | 2014-11-21 A | 2014-11-21 A |  | 100% |  |  |  | Noah | 8h | 8h |
| 3 | 3 | **Project Research** |  | 31d | 2014-11-21 A | 2015-01-02 |  | 99% | 0d | 0d |  | Digital Dash Team | 2184h | 2136h |
| 4 | 3.1 | Microprocessor | manual | 25d | 2014-11-21 A | 2014-12-25 A |  | 100% |  |  |  | Chad; Sean | 400h | 400h |
| 5 | 3.2 | LCD Screens | manual | 25d | 2014-11-21 A | 2014-12-25 A |  | 100% |  |  |  | Jaime; Noah; Rishal | 600h | 600h |
| 6 | 3.3 | CAN | manual | 25d | 2014-11-21 A | 2014-12-25 A |  | 100% |  |  |  | Chad; Noah; Sean | 600h | 600h |
| 7 | 3.4 | LCD Screen Orientation | manual | 6d | 2014-12-28 A | 2015-01-02 A |  | 100% |  |  |  | Chad; Jaime; Rishal | 144h | 144h |
| 8 | 3.5 | GUI Layout | manual | 6d | 2014-12-28 A | 2015-01-02 A |  | 100% |  |  |  | Jaime | 48h | 48h |
| 9 | 3.6 | Enclosure | manual | 6d | 2014-12-28 A | 2015-01-02 A |  | 100% |  |  |  | Jaime | 48h | 48h |
| 10 | 3.7 | Cost/Budget | manual | 6d | 2014-12-28 A | 2015-01-02 A |  | 100% |  |  |  | Noah; Rishal | 96h | 96h |
| 11 | 4 | **Project Proposal** |  | 42d | 2015-01-03 A | 2015-02-13 A | 3 | 100% |  |  |  | Digital Dash Team | 632h | 632h |
| 12 | 4.1 | Presentation Draft | manual | 1d | 2015-01-03 A | 2015-01-03 A |  | 100% |  |  | start no earlier than 2015-01-03 | Rishal | 8h | 8h |
| 13 | 4.2 | Review Presentation | manual | 7d | 2015-01-04 A | 2015-01-10 A | 12 | 100% |  |  | start no earlier than 2015-01-04 | Digital Dash Team | 56h | 56h |
| 14 | 4.3 | Revise & Finalize Presentation | manual | 6d | 2015-01-13 A | 2015-01-18 A | 13 | 100% |  |  |  | Digital Dash Team | 48h | 48h |
| 15 | 4.4 | Present to Sponsers | manual | 1d | 2015-01-21 A | 2015-01-21 A | 14 | 100% |  |  |  | Digital Dash Team | 8h | 8h |
| 16 | 4.5 | Documentation 1st Draft | manual | 5d | 2015-01-23 A | 2015-01-27 A |  | 100% |  |  |  | Noah | 40h | 40h |
| 17 | 4.6 | Document Revision | manual | 5d | 2015-01-28 A | 2015-02-01 A |  | 100% |  |  |  | Digital Dash Team | 40h | 40h |
| 18 | 4.7 | Documentation Final | manual | 12d | 2015-02-02 A | 2015-02-13 A |  | 100% |  |  |  | Digital Dash Team | 96h | 96h |
| 19 | 5 | **Parts Order** |  | 8d | 2015-01-23 A | 2015-01-30 A | 15 | 100% |  |  |  | Digital Dash Team | 272h | 272h |
| 20 | 5.1 | Create BOM | manual | 4d | 2015-01-23 A | 2015-01-26 A |  | 100% |  |  |  | Rishal | 32h | 32h |
| 21 | 5.2 | Revise & Review BOM | manual | 1d | 2015-01-29 A | 2015-01-29 A | 20 | 100% |  |  |  | Digital Dash Team | 8h | 8h |
| 22 | 5.3 | Finalize BOM | manual | 1d | 2015-01-30 A | 2015-01-30 A | 21 | 100% |  |  |  | Digital Dash Team | 8h | 8h |
| 23 | 5.4 | Inquire Sample Parts | manual | 7d | 2015-01-23 A | 2015-01-29 A |  | 100% |  |  |  | Sean | 56h | 56h |
| 24 | 5.5 | Order Parts | manual | 7d | 2015-01-23 A | 2015-01-29 A |  | 100% |  |  |  | Chad; Noah | 112h | 112h |

| ID | WBS | Task | Type | Duration | Start | Finish | Predecessors | Complete | Remaining | Total slack | Resources | Work | Actual work |
| --- | --- | --- | --- | --- | --- | --- | --- | --- | --- | --- | --- | --- | --- |
| 25 | 6 | **Software Design** |  | 77d | 2015-01-24 A | 2015-04-10 |  | 99% | 0.86d | 0d | Chad; Sean | 1464h | 313.51h |
| 26 | 6.1 | Develop Algorithms | manual | 2d | 2015-01-24 A | 2015-01-25 A |  | 100% |  |  | Sean | 16h | 16h |
| 27 | 6.2 | Write Pseudocode | manual | 4d | 2015-01-26 A | 2015-01-29 A | 26 | 100% |  |  | Sean | 32h | 32h |
| 28 | 6.3 | Test Code | manual | 2d | 2015-02-13 A | 2015-02-14 A | 27 | 100% |  |  | Chad; Sean | 32h | 32h |
| 29 | 6.4 | Debug Code | manual | 4d | 2015-01-31 A | 2015-02-03 A | 28 | 100% |  |  | Chad; Sean | 64h | 64h |
| 30 | 6.5 | Verify Code | manual | 3d | 2015-02-04 A | 2015-02-06 A | 29 | 100% |  |  | Chad; Sean | 48h | 48h |
| 31 | 6.6 | Demo Code | manual | 1d | 2015-04-10 A | 2015-04-10 A |  | 100% |  |  | Sean | 8h | 8h |
| 32 | 6.7 | Intergrate Code | manual | 2d | 2015-02-06 A | 2015-02-07 | 30 | 90% | 0.2d |  | Chad; Sean | 32h | 28.8h |
| 33 | 7 | **Prototype Hardware** |  | 13d | 2015-01-24 A | 2015-02-05 A |  | 100% |  |  | Jaime; Noah; Rishal | 624h | 624h |
| 34 | 7.1 | Schematic Design | manual | 5d | 2015-01-24 A | 2015-01-28 A |  | 100% |  |  | Jaime; Noah; Rishal | 120h | 120h |
| 35 | 7.2 | Build Prototype | manual | 4d | 2015-01-29 A | 2015-02-01 A | 34 | 100% |  |  | Jaime; Noah; Rishal | 96h | 96h |
| 36 | 7.3 | Debug/Verify | manual | 4d | 2015-02-02 A | 2015-02-05 A | 35 | 100% |  |  | Jaime; Noah; Rishal | 96h | 96h |
| 37 | 8 | **Prototype Enclosure** |  | 8d | 2015-02-28 A | 2015-03-07 A | 55 | 100% |  |  | Jaime | 208h | 208h |
| 38 | 8.1 | Design | manual | 2d | 2015-02-28 A | 2015-03-01 A | 55 | 100% |  |  | Rishal | 16h | 16h |
| 39 | 8.2 | Build Prototype | manual | 2d | 2015-03-02 A | 2015-03-03 A | 38 | 100% |  |  | Jaime; Rishal | 32h | 32h |
| 40 | 8.3 | Test Enclosure | manual | 3d | 2015-03-04 A | 2015-03-06 A | 39 | 100% |  |  | Jaime; Noah; Rishal | 72h | 72h |
| 41 | 8.4 | Finalize | manual | 1d | 2015-03-07 A | 2015-03-07 A | 40 | 100% |  |  | Jaime; Noah; Rishal | 24h | 24h |
| 42 | 9 | **Prototype Design Implementation** |  | 5d | 2015-03-08 A | 2015-03-12 | 40 | 15% | 4.25d | 0d | Digital Dash Team | 240h | 36h |
| 43 | 9.1 | Intergrate Full System | manual | 1d | 2015-03-08 A | 2015-03-08 | 32, 36, 55, 41 | 75% | 0.25d |  | Chad; Jaime; Noah; Rishal; Sean | 40h | 30h |
| 44 | 9.2 | Test Full System | manual | 1d | 2015-03-09 | 2015-03-09 | 43 |  |  |  | Chad; Jaime; Noah; Rishal; Sean | 40h |  |
| 45 | 9.3 | Validate | manual | 1d | 2015-03-10 | 2015-03-10 | 44 |  |  |  | Chad; Jaime; Noah; Rishal; Sean | 40h |  |
| 46 | 9.4 | Debug/Verify | manual | 2d | 2015-03-11 | 2015-03-12 | 45 |  |  |  | Chad; Jaime; Noah; Rishal; Sean | 80h |  |
| 47 | 10 | **PCB Layout** |  | 15d | 2015-04-01 A | 2015-04-15 A | 35 | 100% |  |  | Jaime; Noah; Rishal | 640h | 640h |
| 48 | 10.1 | Design First Layout | manual | 3d | 2015-04-01 A | 2015-04-03 A | 35 | 100% |  |  | Rishal; Jaime | 48h | 48h |
| 49 | 10.2 | Review Design | manual | 2d | 2015-04-04 A | 2015-04-05 A | 48 | 100% |  |  | Jaime; Noah; Rishal | 48h | 48h |
| 50 | 10.3 | Board Improvements | manual | 2d | 2015-04-06 A | 2015-04-07 A | 49 | 100% |  |  | Jaime; Noah; Rishal | 48h | 48h |
| 51 | 10.4 | Finalize Board | manual | 1d | 2015-04-08 A | 2015-04-08 A | 50 | 100% |  |  | Jaime; Noah; Rishal | 24h | 24h |
| 52 | 10.5 | Order PCB Board | manual | 7d | 2015-04-09 A | 2015-04-15 A | 51 | 100% |  |  | Jaime; Rishal | 112h | 112h |

| ID | WBS | Task | Type | Duration | Start | Finish | Predecessors | Complete | Remaining | Total slack | Resources | Work | Actual work |
| --- | --- | --- | --- | --- | --- | --- | --- | --- | --- | --- | --- | --- | --- |
| 53 | 11 | **Final Hardware Build** |  | 6d | 2015-04-16 A | 2015-04-21 A | 52 | 100% |  |  | Jaime; Noah; Rishal | 288h | 288h |
| 54 | 11.1 | Solder Board | manual | 4d | 2015-04-16 A | 2015-04-19 A | 52 | 100% |  |  | Jaime; Noah; Rishal | 96h | 96h |
| 55 | 11.2 | Debug/Verify | manual | 2d | 2015-04-20 A | 2015-04-21 A | 54 | 100% |  |  | Jaime; Noah; Rishal | 48h | 48h |
| 56 | 12 | **Final Encloure** |  | 6d | 2015-04-21 A | 2015-04-26 | 55 | 33% | 4d | 0d | Digital Dash Team | 168h | 56h |
| 57 | 12.1 | Design | manual | 5d | 2015-04-21 A | 2015-04-25 A | 55 | 100% |  |  | Digital Dash Team | 40h | 40h |
| 58 | 12.2 | Build Prototype | manual | 5d | 2015-04-22 | 2015-04-26 | 57 |  |  |  | Jaime | 40h |  |
| 59 | 12.3 | Test Enclosure | manual | 3d | 2015-04-23 | 2015-04-25 | 58 |  |  |  | Digital Dash Team | 24h |  |
| 60 | 12.4 | Finalize | manual | 2d | 2015-04-24 | 2015-04-25 | 59 |  |  |  | Digital Dash Team | 16h |  |
| 61 | 13 | **Operation Manuals** |  | 113d | 2015-02-07 A | 2015-05-30 | 30, 36 | 53% | 53.18d | 0d | Digital Dash Team | 1904h | 1078.59h |
| 62 | 13.1 | Create First Draft | manual | 10d | 2015-02-07 A | 2015-02-16 A | 30 | 100% |  |  | Rishal | 80h | 80h |
| 63 | 13.2 | Add Software Documentation | manual | 20d | 2015-02-17 A | 2015-03-08 | 62 | 75% | 5d |  | Chad; Sean | 320h | 240h |
| 64 | 13.3 | Add Hardware Documentation | manual | 20d | 2015-02-17 A | 2015-03-08 | 62 | 75% | 5d |  | Noah; Rishal | 320h | 240h |
| 65 | 13.4 | Add Enclosure Documentation | manual | 20d | 2015-02-17 A | 2015-03-08 | 62 | 25% | 15d |  | Jaime | 160h | 40h |
| 66 | 13.5 | Review and Revise | manual | 10d | 2015-03-09 | 2015-03-18 | 65 |  |  |  | Digital Dash Team | 80h |  |
| 67 | 13.6 | Finalize | manual | 5d | 2015-05-26 | 2015-05-30 | 66 |  |  |  | Digital Dash Team | 40h |  |
| 68 | 14 | **Poster Presentation** |  | 12d | 2015-05-25 A | 2015-06-05 |  | 52% | 5.75d |  | Digital Dash Team | 192h | 50h |
| 69 | 14.1 | Create First Draft | manual | 5d | 2015-05-25 A | 2015-05-29 A |  | 100% |  |  | Digital Dash Team | 40h | 40h |
| 70 | 14.2 | Review and Revise | manual | 5d | 2015-05-30 A | 2015-06-03 |  | 25% | 3.75d |  | Digital Dash Team | 40h | 10h |
| 71 | 14.3 | Final Draft | manual | 1d | 2015-06-04 | 2015-06-04 |  |  |  |  | Digital Dash Team | 8h |  |
| 72 | 14.4 | Presentation | manual | 1d | 2015-06-05 | 2015-06-05 |  |  |  |  | Digital Dash Team | 8h |  |
